Schedule from MS Project, 2009-08-26 to 2009-09-29.
DELL

## Calendars

- 标准: Mon-Fri 08:00-12:00, 13:00-17:00; Sat-Sun off. Exceptions (off unless hours are given): 2009-09-05 08:00-12:00, 13:00-17:00, 2009-09-12 08:00-12:00, 13:00-17:00.

## Resources

| Resource |
| --- |
| 刘洪 |
| 刘洪 陈一民 |
| 肖剑波 |
| 赵红海 |
| 陈一民 |
| 鲁世贵 |
| 唐彦 |
| 李滔 |
| 全体 |
| 陈 一民 |
| 新同事 |
| 于杨 |
| 程秀美 |

## Schedule

| ID | WBS | Task | Duration | Start | Finish | Predecessors | Total slack | Free slack | Constraint | Resources | Work |
| --- | --- | --- | --- | --- | --- | --- | --- | --- | --- | --- | --- |
| 2 | 1 | **需求分析** | 7d? | 2009-08-26 | 2009-09-03 |  | 8d |  |  |  | 304h |
| 3 | 1.1 | 国寿总部接口部分需求分析 | 2d? | 2009-08-27 | 2009-08-28 |  | 25d |  | finish no earlier than 2009-08-28 | 刘洪 | 16h |
| 4 | 1.2 | 扣费，上下行需求分析 | 2d? | 2009-08-27 | 2009-08-28 |  | 25d |  | finish no earlier than 2009-08-28 | 刘洪 陈一民 | 16h |
| 5 | 1.3 | 业务部分需求分析 | 1d | 2009-08-28 | 2009-08-28 |  | 19d | 0d | finish no earlier than 2009-08-28 | 肖剑波; 于杨; 刘洪 | 24h |
| 6 | 1.4 | 投保网站需求分析 | 5d? | 2009-08-28 | 2009-09-03 |  | 18d | 0d | finish no earlier than 2009-09-03 | 陈一民; 鲁世贵 | 80h |
| 7 | 1.5 | wap网站需求分析 | 5d? | 2009-08-28 | 2009-09-03 |  | 14d | 0d | finish no earlier than 2009-09-03 | 唐彦; 陈一民 | 80h |
| 8 | 1.6 | 后台网站需求分析 | 5d? | 2009-08-27 | 2009-09-02 |  | 8d | 0d | finish no earlier than 2009-09-02 | 唐彦; 李滔 | 80h |
| 9 | 1.7 | 需求评审 | 1d? | 2009-08-26 | 2009-08-26 |  | 27d |  |  | 全体 | 8h |
| 10 | 2 | 网站产品设计 | 15d | 2009-08-27 | 2009-09-14 |  | 6d | 1d | start no earlier than 2009-08-27 | 赵红海 | 120h |
| 12 | 3 | **系统设计** | 8d? | 2009-08-31 | 2009-09-08 |  | 10d |  |  |  | 368h |
| 13 | 3.1 | 国寿总部接口设计 | 3d? | 2009-08-31 | 2009-09-02 |  | 21.5d | 0d | finish no earlier than 2009-09-02 | 刘洪 | 24h |
| 14 | 3.2 | 系统平台接口设计 | 2d? | 2009-09-02 | 2009-09-03 |  | 20d | 0d | finish no earlier than 2009-09-03 | 刘洪; 陈一民 | 32h |
| 15 | 3.3 | 系统业务逻辑框架设计 | 5d | 2009-08-31 | 2009-09-04 | 5 | 20d |  |  | 肖剑波 | 40h |
| 16 | 3.4 | 数据库结构设计 | 3.75d | 2009-08-31 | 2009-09-03 |  | 15.25d | 0d | start no earlier than 2009-08-31 | 刘洪; 唐彦; 肖剑波; 于杨 | 120h |
| 17 | 3.5 | 投保网站设计 | 3d | 2009-09-04 | 2009-09-07 | 6 | 18d |  |  | 陈一民; 鲁世贵 | 48h |
| 18 | 3.6 | wap网站设计 | 2d | 2009-09-04 | 2009-09-05 | 7 | 14d | 0d |  | 唐彦; 陈一民 | 32h |
| 19 | 3.7 | 后台网站设计 | 4d | 2009-09-03 | 2009-09-07 | 8 | 8d | 0d |  | 唐彦; 李滔 | 64h |
| 20 | 3.8 | 设计评审 | 1d? | 2009-09-08 | 2009-09-08 | 19 | 16d |  |  | 全体 | 8h |
| 21 | 4 | **系统编码** | 17d? | 2009-09-03 | 2009-09-23 |  | 4d |  |  |  | 696h |
| 22 | 4.1 | 国寿总部投保接口编码 | 5d | 2009-09-03 | 2009-09-08 | 13 | 16d |  |  | 刘洪; 陈一民 | 80h |
| 23 | 4.2 | 系统平台框架编码 | 5d | 2009-09-04 | 2009-09-09 | 14 | 15d |  |  | 肖剑波 | 40h |
| 24 | 4.3 | 系统上下行编码 | 5d | 2009-09-04 | 2009-09-09 | 14 | 15d |  |  | 刘洪; 新同事 | 80h |
| 25 | 4.4 | 系统支付接口编码 | 5d | 2009-09-04 | 2009-09-09 | 14 | 15d |  |  | 刘洪; 陈一民 | 80h |
| 26 | 4.5 | 数据库逻辑改造 | 5d | 2009-09-03 | 2009-09-09 | 16 | 15.25d |  |  | 唐彦; 于杨 | 80h |
| 27 | 4.6 | 投保网站编码 | 6d? | 2009-09-16 | 2009-09-23 | 10 | 1d | 0d | start no earlier than 2009-09-16 | 鲁世贵; 陈一民 | 96h |
| 28 | 4.7 | 后台网站编码 | 10d | 2009-09-08 | 2009-09-18 | 19 | 7d |  |  | 李滔; 唐彦 | 160h |
| 29 | 4.8 | wap网站编码 | 5d | 2009-09-07 | 2009-09-11 | 18 | 13d |  |  | 陈一民; 鲁世贵 | 80h |

| ID | WBS | Task | Duration | Start | Finish | Predecessors | Total slack | Constraint | Resources | Work |
| --- | --- | --- | --- | --- | --- | --- | --- | --- | --- | --- |
| 30 | 5 | **系统测试** | 13d | 2009-09-12 | 2009-09-29 |  | 0d |  |  | 184h |
| 31 | 5.1 | 投保系统测试及bug修复 | 4d | 2009-09-24 | 2009-09-29 |  | 0d | start no earlier than 2009-09-24 | 程秀美; 于杨; 鲁世贵 | 96h |
| 32 | 5.2 | 投保网站测试及bug修复 | 3d | 2009-09-24 | 2009-09-28 | 27 | 1d | start no earlier than 2009-09-24 | 程秀美; 于杨 | 48h |
| 33 | 5.3 | wap网站测试 | 5d | 2009-09-12 | 2009-09-17 |  | 8d | start no earlier than 2009-09-12 | 于杨 | 40h |
